# BiblioNet

Schedule from MS Project, 2020-10-30 to 2021-01-20, costs in €, A marks actual dates.
C07

## Calendars

- Standard: Mon-Fri 09:00-13:00, 14:00-18:00; Sat off; Sun 09:00-13:00, 14:00-18:00. Exceptions (off unless hours are given): 2020-12-07 to 2020-12-12 (Vacanze).

## Resources

| Resource |
| --- |
| Antonio Della Porta |
| Giulio Triggiani |
| Ciro Maiorino |
| Viviana Pentangelo |
| Gianmario Voria |
| Alessio Casolaro |
| Luca Topo |
| Nicola Pagliara |

## Schedule

| ID | WBS | Task | Type | Duration | Start | Finish | Predecessors | Complete | Remaining | Total slack | Work | Actual work | Cost | Baseline cost | Actual cost |
| --- | --- | --- | --- | --- | --- | --- | --- | --- | --- | --- | --- | --- | --- | --- | --- |
| 1 | 1 | **BiblioNet** |  | 65d | 2020-10-30 A | 2021-01-20 |  | 99% | 0d | 0d | 378h | 378h | 26,180 | 26,180 | 26,180 |
| 2 | 1.1 | **Training** |  | 65d | 2020-10-30 A | 2021-01-19 A |  | 100% |  |  | 48h | 48h | 3,360 |  | 3,360 |
| 3 | 1.1.1 | Training su tools |  | 1.16d | 2020-10-30 A | 2020-11-01 A | 9SS | 100% |  |  | 2h | 2h | 140 | 3,360 | 140 |
| 4 | 1.1.2 | Training SDD |  | 1d | 2020-11-22 A | 2020-11-22 A | 29SS | 100% |  |  | 2h | 2h | 140 |  | 140 |
| 5 | 1.1.3 | Training Test Design |  | 1d | 2020-12-01 A | 2020-12-02 A | 48SS | 100% |  |  | 8h | 8h | 560 |  | 560 |
| 6 | 1.1.4 | Training Spring |  | 1d | 2020-12-17 A | 2020-12-17 A | 65SS | 100% |  |  | 20h | 20h | 1,400 |  | 1,400 |
| 7 | 1.1.5 | Training testing |  | 1d | 2020-12-17 A | 2020-12-17 A | 65SS | 100% |  |  | 8h | 8h | 560 |  | 560 |
| 8 | 1.1.6 | Altro training | manual | 65d | 2020-10-30 A | 2021-01-19 A |  | 100% |  |  | 8h | 8h | 560 |  | 560 |
| 9 | 1.2 | **Requirements Elicitation and Analysis** |  | 19d | 2020-10-30 A | 2020-11-20 |  | 99% | 0d | 0d | 93h | 93h | 6,510 | 6,510 | 6,510 |
| 10 | 1.2.1 | **Elicitation** |  | 8d | 2020-10-30 A | 2020-11-08 A |  | 100% |  |  | 56h | 56h | 3,920 | 3,920 | 3,920 |
| 11 | 1.2.1.1 | Identificazione degli attori |  | 3d | 2020-10-30 A | 2020-11-02 A |  | 100% |  |  | 8h | 8h | 560 | 560 | 560 |
| 12 | 1.2.1.2 | Analisi del sistema attuale e costruzione di Activity Diagrams |  | 2d | 2020-11-03 A | 2020-11-04 A | 11 | 100% |  |  | 8h | 8h | 560 | 560 | 560 |
| 13 | 1.2.1.3 | Scrittura di scenari e casi d'uso per l'individuazione di RF e RNF |  | 1d | 2020-11-03 A | 2020-11-03 A | 11 | 100% |  |  | 8h | 8h | 560 | 560 | 560 |
| 14 | 1.2.1.4 | Individuazione dei Requisiti Funzionali |  | 2d | 2020-11-04 A | 2020-11-05 A | 13 | 100% |  |  | 8h | 8h | 560 | 560 | 560 |
| 15 | 1.2.1.5 | Individuazione dei Requisiti NON Funzionali |  | 2d | 2020-11-04 A | 2020-11-05 A | 13 | 100% |  |  | 8h | 8h | 560 | 560 | 560 |
| 16 | 1.2.1.6 | Scrittura di scenari e casi d'uso sulla base dei requisiti funzionali |  | 2d | 2020-11-06 A | 2020-11-08 A | 14 | 100% |  |  | 16h | 16h | 1,120 | 1,120 | 1,120 |
| 17 | 1.2.2 | **Analysis** |  | 8d | 2020-11-09 A | 2020-11-17 A | 10 | 100% |  |  | 33h | 33h | 2,310 | 2,310 | 2,310 |
| 18 | 1.2.2.1 | **Costruzione del modello ad oggetti** |  | 4d | 2020-11-09 A | 2020-11-12 A |  | 100% |  |  | 17h | 17h | 1,190 | 1,190 | 1,190 |
| 19 | 1.2.2.1.1 | Individuazione degli oggetti (Entity, Boundary, Control) a partire da RF, scenari e casi d'uso |  | 1d | 2020-11-09 A | 2020-11-09 A |  | 100% |  |  | 5h | 5h | 350 | 350 | 350 |
| 20 | 1.2.2.1.2 | Costruzione del class diagram usando gli Entity |  | 3d | 2020-11-10 A | 2020-11-12 A | 19 | 100% |  |  | 8h | 8h | 560 | 560 | 560 |
| 21 | 1.2.2.1.3 | Costruzione degli Object Diagrams |  | 1d | 2020-11-10 A | 2020-11-10 A | 19 | 100% |  |  | 4h | 4h | 280 | 280 | 280 |
| 22 | 1.2.2.2 | **Costruzione del modello dinamico** |  | 4d | 2020-11-13 A | 2020-11-17 A | 18 | 100% |  |  | 16h | 16h | 1,120 | 1,120 | 1,120 |
| 23 | 1.2.2.2.1 | Costruzione dei Sequence Diagrams |  | 2d | 2020-11-13 A | 2020-11-15 A |  | 100% |  |  | 8h | 8h | 560 | 560 | 560 |
| 24 | 1.2.2.2.2 | Costruzione degli state chart diagrams |  | 1d | 2020-11-13 A | 2020-11-13 A |  | 100% |  |  | 2h | 2h | 140 | 140 | 140 |
| 25 | 1.2.2.2.3 | Costruzione dei Navigational Paths |  | 1d | 2020-11-16 A | 2020-11-16 A | 23 | 100% |  |  | 2h | 2h | 140 | 140 | 140 |
| 26 | 1.2.2.2.4 | Costruzione dei mockups |  | 2d | 2020-11-16 A | 2020-11-17 A | 23 | 100% |  |  | 4h | 4h | 280 | 280 | 280 |
| 27 | 1.2.3 | Stesura e revisione del RAD |  | 3d | 2020-11-18 A | 2020-11-20 A | 17 | 100% |  |  | 4h | 4h | 280 | 280 | 280 |
| 28 | 1.2.4 | Requirements Analysis Document | milestone | 0d | 2020-11-20 | 2020-11-20 | 27 |  |  | 0d |  |  |  |  |  |

| ID | WBS | Task | Type | Duration | Start | Finish | Predecessors | Complete | Remaining | Total slack | Free slack | Constraint | Work | Actual work | Cost | Baseline cost | Actual cost |
| --- | --- | --- | --- | --- | --- | --- | --- | --- | --- | --- | --- | --- | --- | --- | --- | --- | --- |
| 29 | 1.3 | **System Design** |  | 8.5d | 2020-11-22 A | 2020-12-01 | 9 | 99% | 0d | 0d |  |  | 37h | 37h | 2,590 | 2,590 | 2,590 |
| 30 | 1.3.1 | **Identificare gli obiettivi di design** |  | 1d | 2020-11-22 A | 2020-11-22 A |  | 100% |  |  |  |  | 6h | 6h | 420 | 420 | 420 |
| 31 | 1.3.1.1 | Identificazione dei design goals |  | 0.5d | 2020-11-22 A | 2020-11-22 A |  | 100% |  |  |  |  | 4h | 4h | 280 | 280 | 280 |
| 32 | 1.3.1.2 | Identificare I trade-offs design goal |  | 0.5d | 2020-11-22 A | 2020-11-22 A | 31 | 100% |  |  |  |  | 2h | 2h | 140 | 140 | 140 |
| 33 | 1.3.2 | **Individuare la decomposizione in sottosistemi** |  | 2d | 2020-11-23 A | 2020-11-24 A | 30 | 100% |  |  |  |  | 6h | 6h | 420 | 420 | 420 |
| 34 | 1.3.2.1 | Scelta dell'architettura del sistema e divisione in layers |  | 1d | 2020-11-23 A | 2020-11-23 A |  | 100% |  |  |  |  | 2h | 2h | 140 | 140 | 140 |
| 35 | 1.3.2.2 | Divisione del sistema in sottosistemi |  | 1d | 2020-11-24 A | 2020-11-24 A | 34 | 100% |  |  |  |  | 4h | 4h | 280 | 280 | 280 |
| 36 | 1.3.3 | **Rifinire la decomposizione per soddisfare gli obiettivi di design** |  | 2.5d | 2020-11-25 A | 2020-11-27 A | 33 | 100% |  |  |  |  | 21h | 21h | 1,470 | 1,470 | 1,470 |
| 37 | 1.3.3.1 | Mappare i sottosistemi su un hardware |  | 1.5d | 2020-11-25 A | 2020-11-26 A |  | 100% |  |  |  |  | 1h | 1h | 70 | 70 | 70 |
| 38 | 1.3.3.2 | **Specifica dei dati persistenti** |  | 2.5d | 2020-11-25 A | 2020-11-27 A |  | 100% |  |  |  |  | 12h | 12h | 840 | 840 | 840 |
| 39 | 1.3.3.2.1 | Identificare gli oggetti persistenti |  | 1d | 2020-11-25 A | 2020-11-25 A |  | 100% |  |  |  |  | 4h | 4h | 280 | 280 | 280 |
| 40 | 1.3.3.2.2 | Costruzione dello schema dei dati persistenti |  | 1d | 2020-11-26 A | 2020-11-26 A | 39 | 100% |  |  |  |  | 4h | 4h | 280 | 280 | 280 |
| 41 | 1.3.3.2.3 | Costruzione del Dizionario dei Dati |  | 0.5d | 2020-11-27 A | 2020-11-27 A | 40 | 100% |  |  |  |  | 4h | 4h | 280 | 280 | 280 |
| 42 | 1.3.3.3 | Definire la matrice per il controllo degli accessi |  | 0.5d | 2020-11-25 A | 2020-11-25 A |  | 100% |  |  |  |  | 1h | 1h | 70 | 70 | 70 |
| 43 | 1.3.3.4 | Definire il Flusso di Controllo Globale del sistema |  | 0.5d | 2020-11-25 A | 2020-11-25 A | 42 | 100% |  |  |  |  | 1h | 1h | 70 | 70 | 70 |
| 44 | 1.3.3.5 | Identificare i servizi per ogni sottosistema |  | 1d | 2020-11-26 A | 2020-11-26 A | 43 | 100% |  |  |  |  | 4h | 4h | 280 | 280 | 280 |
| 45 | 1.3.3.6 | Identificare le Boundary Conditions |  | 1d | 2020-11-25 A | 2020-11-25 A |  | 100% |  |  |  |  | 2h | 2h | 140 | 140 | 140 |
| 46 | 1.3.4 | Stesura e revisione dello SDD |  | 3d | 2020-11-27 A | 2020-12-01 A | 36 | 100% |  |  |  |  | 4h | 4h | 280 | 280 | 280 |
| 47 | 1.3.5 | System Design Document | milestone | 0d | 2020-12-01 | 2020-12-01 | 46 |  |  | 0d |  |  |  |  |  |  |  |
| 48 | 1.4 | **System Test Design** |  | 4d | 2020-12-01 A | 2020-12-06 | 29 | 99% | 0d | 0.5d | 0d |  | 16h | 16h | 1,120 | 1,120 | 1,120 |
| 49 | 1.4.1 | Identificazione dei casi di test funzionali tramite category partition |  | 2d | 2020-12-01 A | 2020-12-03 A |  | 100% |  |  |  |  | 8h | 8h | 560 | 560 | 560 |
| 50 | 1.4.2 | Scrittura dei casi di test |  | 2d | 2020-12-03 A | 2020-12-06 A | 49 | 100% |  |  |  |  | 8h | 8h | 560 | 560 | 560 |
| 51 | 1.4.3 | Test plan e Test Case Specification | milestone | 0d | 2020-12-06 | 2020-12-06 | 50 |  |  | 0.5d |  |  |  |  |  |  |  |
| 52 | 1.5 | Consegna intermedia | milestone | 0d | 2020-12-06 | 2020-12-06 | 29, 9, 48 |  |  | 0.5d |  | start no earlier than 2020-12-06 |  |  |  |  |  |

| ID | WBS | Task | Type | Duration | Start | Finish | Predecessors | Complete | Remaining | Total slack | Constraint | Work | Actual work | Cost | Baseline cost | Actual cost |
| --- | --- | --- | --- | --- | --- | --- | --- | --- | --- | --- | --- | --- | --- | --- | --- | --- |
| 53 | 1.6 | **Object Design** |  | 4d | 2020-12-13 A | 2020-12-16 | 52 | 99% | 0d | 0d |  | 30h | 30h | 1,820 | 1,820 | 1,820 |
| 54 | 1.6.1 | **Riuso** |  | 2d | 2020-12-13 A | 2020-12-14 A |  | 100% |  |  |  | 6h | 6h | 420 | 420 | 420 |
| 55 | 1.6.1.1 | Identificazione e integrazione di componenti COTS |  | 2d | 2020-12-13 A | 2020-12-14 A |  | 100% |  |  |  | 2h | 2h | 140 | 140 | 140 |
| 56 | 1.6.1.2 | Identificazione e integrazione di Design Patterns utili |  | 2d | 2020-12-13 A | 2020-12-14 A |  | 100% |  |  |  | 4h | 4h | 280 | 280 | 280 |
| 57 | 1.6.2 | **Specifica delle interfacce** |  | 3d | 2020-12-13 A | 2020-12-15 A |  | 100% |  |  |  | 20h | 20h | 1,120 | 1,120 | 1,120 |
| 58 | 1.6.2.1 | Identificazione dei packages a partire dai sottosistemi |  | 0.5d | 2020-12-13 A | 2020-12-13 A |  | 100% |  |  |  | 1h | 1h | 70 | 70 | 70 |
| 59 | 1.6.2.2 | Identificazione delle classi per ogni package |  | 0.5d | 2020-12-13 A | 2020-12-13 A | 58 | 100% |  |  |  | 1h | 1h | 70 | 70 | 70 |
| 60 | 1.6.2.3 | Specifica degli attributi e delle signatures dei metodi |  | 1d | 2020-12-14 A | 2020-12-14 A | 59 | 100% |  |  |  | 12h | 12h | 560 | 560 | 560 |
| 61 | 1.6.2.4 | Specifica dei vincoli: invarianti, precondizioni e postcondizioni |  | 0.5d | 2020-12-15 A | 2020-12-15 A | 60 | 100% |  |  |  | 4h | 4h | 280 | 280 | 280 |
| 62 | 1.6.2.5 | Specifica delle eccezioni |  | 0.5d | 2020-12-15 A | 2020-12-15 A | 61 | 100% |  |  |  | 2h | 2h | 140 | 140 | 140 |
| 63 | 1.6.3 | Scrittura e revisione dello ODD |  | 1d | 2020-12-16 A | 2020-12-16 A | 54, 57 | 100% |  |  |  | 4h | 4h | 280 | 280 | 280 |
| 64 | 1.6.4 | Object Design Document | milestone | 0d | 2020-12-16 | 2020-12-16 | 63 |  |  | 0d |  |  |  |  |  |  |
| 65 | 1.7 | **System Implementation** |  | 28d | 2020-12-17 A | 2021-01-18 | 53 | 99% | 0d | 1d |  | 130h | 130h | 9,100 | 9,100 | 9,100 |
| 66 | 1.7.1 | Setup dell'ambiente di lavoro |  | 1d | 2020-12-17 A | 2020-12-17 A |  | 100% |  |  |  | 2h | 2h | 140 | 140 | 140 |
| 67 | 1.7.2 | Setup del DB |  | 2d | 2020-12-18 A | 2020-12-20 A | 66 | 100% |  |  |  | 4h | 4h | 280 | 280 | 280 |
| 68 | 1.7.3 | Implementazione delle funzionalità a priorità elevata attraverso Scrum |  | 21d | 2020-12-21 A | 2021-01-13 A | 67 | 100% |  |  |  | 80h | 80h | 5,600 | 5,600 | 5,600 |
| 69 | 1.7.4 | Scrittura delle classi di test per Unit e Integration |  | 24d | 2020-12-21 A | 2021-01-17 A | 68SS | 100% |  |  |  | 40h | 40h | 2,800 | 2,800 | 2,800 |
| 70 | 1.7.5 | Generazione della javadoc e creazione della pagina per il completamento dello ODD |  | 1d | 2021-01-18 A | 2021-01-18 A | 68, 69 | 100% |  |  |  | 4h | 4h | 280 | 280 | 280 |
| 71 | 1.7.6 | Applicativo e Javadoc | milestone | 0d | 2021-01-18 | 2021-01-18 | 68, 69, 70 |  |  | 0.5d |  |  |  |  |  |  |
| 72 | 1.8 | **Testing** |  | 1.5d | 2021-01-18 A | 2021-01-19 | 68 | 99% | 0d | 0.5d |  | 24h | 24h | 1,680 | 1,680 | 1,680 |
| 73 | 1.8.1 | Esecuzione dei test di unità |  | 0.5d | 2021-01-18 A | 2021-01-18 A | 69 | 100% |  |  |  | 8h | 8h | 560 | 560 | 560 |
| 74 | 1.8.2 | Esecuzione dei test di integrazione |  | 0.5d | 2021-01-18 A | 2021-01-18 A | 69 | 100% |  |  |  | 8h | 8h | 560 | 560 | 560 |
| 75 | 1.8.3 | Esecuzione dei test di sistema |  | 0.5d | 2021-01-19 A | 2021-01-19 A | 65 | 100% |  |  |  | 8h | 8h | 560 | 560 | 560 |
| 76 | 1.8.4 | Test Incident Report e Test Summary Report | milestone | 0d | 2021-01-19 | 2021-01-19 | 73, 74, 75 |  |  | 0.5d |  |  |  |  |  |  |
| 77 | 1.9 | Consegna finale | milestone | 0d | 2021-01-20 | 2021-01-20 | 53, 65, 72 |  |  | 0d | start no earlier than 2021-01-20 |  |  |  |  |  |
